# Project_art_plans

Schedule from MS Project, 2003-07-11 to 2004-04-08.
Nival Interactive

## Calendars

- Standard: Mon-Fri 08:00-12:00, 13:00-17:00; Sat-Sun off.

## Resources

| Resource |
| --- |
| Текстурер 1 |
| Барулин Д. |
| Modeler1 |
| Modeler2 |
| Климова И. |
| Гурьева М. |
| Texturer1 |
| Texturier2 |
| Texturier3 |
| Texturier4 |
| Серков А. |
| Севостьянова Е. |

## Schedule

| ID | WBS | Task | Duration | Start | Finish | Total slack | Constraint | Resources | Work | Text2 | Text1 |
| --- | --- | --- | --- | --- | --- | --- | --- | --- | --- | --- | --- |
| 1 | 1 | Моделинг Buildings for EngineAlpha | 2d | 2003-07-11 | 2003-07-14 | 212d | start no earlier than 2003-07-11 | Барулин Д. | 16h | 1.3 |  |
| 2 | 2 | Modeling objects for EngineAlpha | 2d | 2003-07-15 | 2003-07-16 | 210d | start no earlier than 2003-07-15 | Барулин Д. | 16h | 0.6 |  |
| 3 | 3 | Modeling Soldiers for EngineAlpha | 2d | 2003-07-17 | 2003-07-18 | 208d | start no earlier than 2003-07-17 | Барулин Д. | 16h |  |  |
| 4 | 4 | Animation of trees | 1d | 2003-07-21 | 2003-07-21 | 207d | start no earlier than 2003-07-20 | Барулин Д. | 8h | 0.4 |  |
| 5 | 5 | Modeling Tank for EngineAlpha | 1d | 2003-07-22 | 2003-07-22 | 206d | start no earlier than 2003-07-22 | Барулин Д. | 8h | 0.71 |  |
| 6 | 6 | Modeling Avia for EngineAlpha | 1d | 2003-07-23 | 2003-07-23 | 205d | start no earlier than 2003-07-23 | Барулин Д. | 8h | 0.61 |  |
| 7 | 7 | Modeling Ship for EngineAlpha | 1d | 2003-07-24 | 2003-07-24 | 204d | start no earlier than 2003-07-24 | Барулин Д. | 8h | 1.01 |  |
| 8 | 8 | Modeling Artillery for EngineAlpha | 1d | 2003-07-25 | 2003-07-25 | 203d | start no earlier than 2003-07-25 | Барулин Д. | 8h | 0.11 |  |
| 9 | 9 | Modeling Auto for EngineAlpha | 1d | 2003-07-28 | 2003-07-28 | 202d | start no earlier than 2003-07-28 | Барулин Д. | 8h | 0.61 |  |
| 10 | 10 | Animations of units | 1d | 2003-07-29 | 2003-07-29 | 201d | start no earlier than 2003-07-29 | Барулин Д. | 8h | 0.35 |  |
| 11 | 11 | Моделинг Building for ArtAlpha | 7d | 2003-07-30 | 2003-08-07 | 175d | start no earlier than 2003-07-30 | Барулин Д. | 56h | 1.3 |  |
| 12 | 12 | Modeling Soldiers for ArtAlpha | 6d | 2003-08-08 | 2003-08-15 | 188d | start no earlier than 2003-08-08 | Барулин Д. | 48h |  |  |
| 13 | 13 | Modeling objects for ArtAlpha | 6d | 2003-09-01 | 2003-09-08 | 172d | start no earlier than 2003-09-01 | Барулин Д. | 48h | 0.6 | 10 |
| 14 | 14 | Animation of trees | 2d | 2003-09-09 | 2003-09-10 | 170d | start no earlier than 2003-09-09 | Барулин Д. | 16h | 0.4 |  |
| 15 | 15 | Modeling Tanks for ArtAlpha | 3d | 2003-09-11 | 2003-09-15 | 109d | start no earlier than 2003-09-11 | Барулин Д. | 24h | 0.71 |  |
| 16 | 16 | Modeling Avia for ArtAlpha | 3d | 2003-09-16 | 2003-09-18 | 106d | start no earlier than 2003-09-16 | Барулин Д. | 24h | 0.61 |  |
| 17 | 17 | Modeling Ships for ArtAlpha | 5d | 2003-09-19 | 2003-09-25 | 101d | start no earlier than 2003-09-19 | Барулин Д. | 40h | 1.01 |  |
| 18 | 18 | Modeling Artillery for ArtAlpha | 1d | 2003-09-26 | 2003-09-26 | 100d | start no earlier than 2003-09-26 | Барулин Д. | 8h | 0.11 |  |
| 19 | 19 | Modeling Auto for ArtAlpha | 3d | 2003-09-29 | 2003-10-01 | 97d | start no earlier than 2003-09-29 | Барулин Д. | 24h | 0.61 |  |
| 20 | 20 | Animations of units | 4d | 2003-10-02 | 2003-10-07 | 93d | start no earlier than 2003-10-02 | Барулин Д. | 32h | 0.35 |  |
| 21 | 21 | Моделинг Buildings | 13d | 2003-10-08 | 2003-10-24 | 80d | start no earlier than 2003-10-08 | Барулин Д. | 104h | 1.3 | 10 |
| 22 | 22 | Моделинг Soldiers | 15d | 2003-10-27 | 2003-11-14 | 65d | start no earlier than 2003-10-27 | Барулин Д. | 120h |  | 15 |
| 23 | 23 | Моделинг SPG | 15d | 2003-11-17 | 2003-12-05 | 50d | start no earlier than 2003-11-17 | Барулин Д. | 120h | 0.61 | 24 |
| 24 | 24 | Modeling Objects | 10d | 2003-12-08 | 2003-12-19 | 40d | start no earlier than 2003-12-08 | Барулин Д. | 80h | 0.6 | 16 |
| 25 | 25 | Моделинг Auto | 12d | 2003-12-22 | 2004-01-06 | 28d | start no earlier than 2003-12-22 | Барулин Д. | 96h | 0.61 | 19 |
| 26 | 26 | Моделинг CoastBattery | 12d | 2004-01-07 | 2004-01-22 | 16d | start no earlier than 2004-01-07 | Барулин Д. | 96h | 3.01 |  |
| 27 | 27 | Моделинг Trains | 6d | 2004-01-23 | 2004-01-30 | 10d | start no earlier than 2004-01-23 | Барулин Д. | 48h | 0.51 | 12 |
| 28 | 28 | Animation of trees | 7d | 2004-02-02 | 2004-02-10 | 42d | start no earlier than 2004-02-02 | Барулин Д. | 56h | 0.4 | 18 |
| 29 | 29 | Animations of units | 42d | 2004-02-11 | 2004-04-08 | 0d | start no earlier than 2004-02-11 | Барулин Д. | 336h | 0.35 | 84 |
| 30 | 30 | Моделинг Buildings | 100d | 2003-09-01 | 2004-01-16 | 59d | start no earlier than 2003-09-01 | Modeler1 | 800h | 1.3 | 77 |
| 31 | 31 | Моделинг Artillery | 4d | 2004-01-19 | 2004-01-22 | 55d | start no earlier than 2004-01-18 | Modeler1 | 32h | 0.11 | 36 |
| 32 | 32 | Моделинг Ships | 6d | 2004-01-23 | 2004-01-30 | 49d | start no earlier than 2004-01-23 | Modeler1 | 48h | 1.01 |  |
| 33 | 33 | Моделинг Avia | 18d | 2004-02-02 | 2004-02-25 | 31d | start no earlier than 2004-02-02 | Modeler1 | 144h | 0.61 | 29 |
| 34 | 34 | Моделинг objects | 18d | 2003-09-01 | 2003-09-24 | 141d | start no earlier than 2003-09-01 | Modeler2 | 144h | 0.6 | 30 |
| 35 | 35 | Моделинг Tanks | 29d | 2003-09-25 | 2003-11-04 | 112d | start no earlier than 2003-09-25 | Modeler2 | 232h | 0.71 | 41 |
| 36 | 36 | Моделинг Soldiers | 27d | 2003-11-05 | 2003-12-11 | 85d | start no earlier than 2003-11-05 | Modeler2 | 216h |  | 27 |
| 37 | 37 | Effects | 48d | 2003-12-12 | 2004-02-17 | 37d | start no earlier than 2003-12-12 | Modeler2 | 384h | 0,6 | 80 |
| 38 | 38 | Texturies Buildings for EngineAlpha | 4d | 2003-07-14 | 2003-07-17 | 190d | start no earlier than 2003-07-14 | Климова И. | 32h | 3.3 |  |
| 39 | 39 | Texturies objects for EngineAlpha | 6d | 2003-07-18 | 2003-07-25 | 184d | start no earlier than 2003-07-18 | Климова И. | 48h | 1.5 |  |
| 40 | 40 | Texturies Building for ArtAlpha | 14d | 2003-07-28 | 2003-08-14 | 170d | start no earlier than 2003-07-27 | Климова И. | 112h | 3.3 |  |
| 41 | 41 | Texturies Building for ArtAlpha | 3d | 2003-09-01 | 2003-09-03 | 156d | start no earlier than 2003-09-01 | Климова И. | 24h | 3.3 |  |
| 42 | 42 | Texturies objects for ArtAlpha | 15d | 2003-09-04 | 2003-09-24 | 141d | start no earlier than 2003-09-04 | Климова И. | 120h | 1.5 | 10 |
| 43 | 43 | Texturies Buildings | 139d | 2003-09-25 | 2004-04-06 | 2d | start no earlier than 2003-09-25 | Климова И. | 1112h | 3.3 | 42 |
| 44 | 44 | Texturies Tank for EngineAlpha | 2d | 2003-07-23 | 2003-07-24 | 185d | start no earlier than 2003-07-23 | Гурьева М. | 16h |  |  |
| 45 | 45 | Texturies Avia for EngineAlpha | 2d | 2003-07-25 | 2003-07-28 | 183d | start no earlier than 2003-07-25 | Гурьева М. | 16h | 1.6 |  |
| 46 | 46 | Texturies Ship for EngineAlpha | 2d | 2003-07-29 | 2003-07-30 | 181d | start no earlier than 2003-07-29 | Гурьева М. | 16h |  |  |
| 47 | 47 | Texturies Artillery for EngineAlpha | 1d | 2003-07-31 | 2003-07-31 | 180d | start no earlier than 2003-07-31 | Гурьева М. | 8h | 0,6 |  |
| 48 | 48 | Texturies Auto for EngineAlpha | 2d | 2003-08-01 | 2003-08-04 | 178d | start no earlier than 2003-08-01 | Гурьева М. | 16h | 2.3 |  |
| 49 | 49 | Texturies Auto for ArtAlpha | 9d | 2003-08-05 | 2003-08-15 | 169d | start no earlier than 2003-08-05 | Гурьева М. | 72h | 2.3 |  |
| 50 | 50 | Texturies Tanks for ArtAlpha | 8d | 2003-09-01 | 2003-09-10 | 151d | start no earlier than 2003-09-01 | Гурьева М. | 64h |  |  |
| 51 | 51 | Texturies Avia for ArtAlpha | 7d | 2003-09-11 | 2003-09-19 | 144d | start no earlier than 2003-09-11 | Гурьева М. | 56h | 1.6 |  |
| 52 | 52 | Texturies Ships for ArtAlpha | 10d | 2003-09-22 | 2003-10-03 | 134d | start no earlier than 2003-09-21 | Гурьева М. | 80h |  |  |
| 53 | 53 | Texturies Artillery for ArtAlpha | 3d | 2003-10-06 | 2003-10-08 | 131d | start no earlier than 2003-10-05 | Гурьева М. | 24h | 0.6 |  |
| 54 | 54 | Texturies SPG | 55d | 2003-10-09 | 2003-12-24 | 76d | start no earlier than 2003-10-09 | Гурьева М. | 440h | 2.3 | 24 |
| 55 | 55 | Texturies Auto | 44d | 2003-12-25 | 2004-02-24 | 32d | start no earlier than 2003-12-25 | Гурьева М. | 352h | 2.3 | 19 |
| 56 | 56 | TexturiesArtillery | 18d | 2004-02-25 | 2004-03-19 | 14d | start no earlier than 2004-02-25 | Гурьева М. | 144h | 0.6 | 36 |
| 57 | 57 | Texturies Ships | 12d | 2004-03-22 | 2004-04-06 | 2d | start no earlier than 2004-03-22 | Гурьева М. | 96h |  |  |
| 58 | 58 | Texturies objects | 45d | 2003-09-02 | 2003-11-03 | 113d | start no earlier than 2003-09-02 | Texturer1 | 360h | 1.5 | 30 |
| 59 | 59 | Texturies Tanks | 82d | 2003-11-04 | 2004-02-25 | 31d | start no earlier than 2003-11-04 | Texturer1 | 656h |  | 41 |
| 60 | 60 | Texturies CoastBattery | 16d | 2004-02-26 | 2004-03-18 | 15d | start no earlier than 2004-02-26 | Texturer1 | 128h |  |  |
| 61 | 61 | Texturies Buildings | 145d | 2003-09-02 | 2004-03-22 | 13d | start no earlier than 2003-09-02 | Texturier2 | 1160h | 3.3 | 44 |
| 62 | 62 | Terrains | 75d | 2003-07-14 | 2003-10-24 | 119d | start no earlier than 2003-07-14 | Севостьянова Е. | 600h | 2.5 | 30 |
| 63 | 63 | Texturies Objects | 24d | 2003-10-27 | 2003-11-27 | 95d | start no earlier than 2003-10-27 | Texturier3 | 192h | 1.5 | 16 |
| 64 | 64 | Texturies Trains | 18d | 2003-11-28 | 2003-12-23 | 77d | start no earlier than 2003-11-28 | Texturier3 | 144h | 1.5 | 12 |
| 65 | 65 | Texturies Avia | 47d | 2003-12-24 | 2004-02-26 | 30d | start no earlier than 2003-12-24 | Texturier3 | 376h | 1.6 | 29 |
| 66 | 66 | Texturies Soldiers for EngineAlpha | 1d | 2003-07-18 | 2003-07-18 | 189d | start no earlier than 2003-07-18 | Серков А. | 8h | 0.5 |  |
| 68 | 67 | Texturies Soldiers for ArtAlpha | 3d | 2003-08-08 | 2003-08-12 | 172d | start no earlier than 2003-08-08 | Серков А. | 24h | 0.5 |  |
| 69 | 68 | Water | 22d | 2003-09-01 | 2003-09-30 | 137d | start no earlier than 2003-09-01 | Серков А. | 176h |  |  |
| 70 | 69 | Roads | 20d | 2003-10-01 | 2003-10-28 | 117d | start no earlier than 2003-10-01 | Серков А. | 160h |  |  |
| 71 | 70 | Texturies Soldiers | 24d | 2003-10-29 | 2003-12-01 | 93d | start no earlier than 2003-10-29 | Серков А. | 192h | 0.5 | 48 |

| ID | WBS | Task | Duration | Start | Finish | Total slack | Constraint | Resources | Work | Text1 | Text2 |
| --- | --- | --- | --- | --- | --- | --- | --- | --- | --- | --- | --- |
| 72 | 71 | Texturies Effects | 32d | 2003-12-12 | 2004-01-26 | 53d | start no earlier than 2003-12-12 | Серков А. | 256h | 80 | 0.4 |
| 73 | 72 | Interface | 70d | 2003-12-01 | 2004-03-05 | 24d | start no earlier than 2003-11-30 | Texturier4 | 560h |  |  |
